# SneakerStoreApplication

Schedule from MS Project, 2021-03-22 to 2021-06-29, costs in ₫.

## Calendars

- Standard: Mon-Fri 08:00-12:00, 13:00-17:00; Sat-Sun off. Exceptions (off unless hours are given): 2021-03-27 08:00-12:00, 13:00-17:00, 2021-04-03 08:00-12:00, 13:00-17:00.

## Resources

| Resource | Group | Rate |
| --- | --- | --- |
| Project Manager | NV | 75000 |
| Business Analyst | NV | 62000 |
| Designer | NV | 62000 |
| FE Developer | NV | 62000 |
| BE Developer | NV | 62000 |
| Tester | NV | 62000 |

## Schedule

| ID | WBS | Task | Type | Duration | Start | Finish | Predecessors | Total slack | Constraint | Resources | Work | Cost |
| --- | --- | --- | --- | --- | --- | --- | --- | --- | --- | --- | --- | --- |
| 1 | 1 | **Project Kick-off** |  | 2d | 2021-03-22 | 2021-03-23 |  | 0d |  |  | 16h | 1,200,000 |
| 2 | 1.1 | Make a project charter |  | 1d | 2021-03-22 | 2021-03-22 |  | 0d |  | Project Manager | 8h | 600,000 |
| 3 | 1.2 | Announcement project |  | 1d | 2021-03-23 | 2021-03-23 | 2 | 0d |  | Project Manager | 8h | 600,000 |
| 4 | 2 | **Discovery Phase** |  | 40d | 2021-03-24 | 2021-05-14 |  | 0d |  |  | 456h | 28,480,000 |
| 5 | 2.1 | **Requirements gathering** |  | 7d | 2021-03-24 | 2021-03-31 |  | 0d |  |  | 40h | 2,688,000 |
| 6 | 2.1.1 | Collect requirements |  | 3d | 2021-03-24 | 2021-03-26 | 3 | 0d | start no earlier than 2021-03-24 | Business Analyst | 24h | 1,488,000 |
| 7 | 2.1.2 | Develop BRD |  | 1d | 2021-03-27 | 2021-03-27 | 6 | 0d | start no earlier than 2021-03-26 | Project Manager | 8h | 600,000 |
| 8 | 2.1.3 | Deliver BRD to Client for review | milestone | 0d | 2021-03-26 | 2021-03-26 |  | 70d | start no earlier than 2021-03-26 |  |  |  |
| 9 | 2.1.4 | Client reviews BRD |  | 1d | 2021-03-29 | 2021-03-29 | 7 | 0d | start no earlier than 2021-03-27 |  |  |  |
| 10 | 2.1.5 | Update BRD base on Client's feedbacks |  | 1d | 2021-03-30 | 2021-03-30 | 9 | 0d |  | Project Manager | 8h | 600,000 |
| 11 | 2.1.6 | Client approves BRD |  | 1d | 2021-03-31 | 2021-03-31 | 10 | 0d |  |  |  |  |
| 12 | 2.2 | **UX/UI Development** |  | 33d | 2021-04-01 | 2021-05-14 |  | 0d |  |  | 416h | 25,792,000 |
| 13 | 2.2.1 | **Sprint 1** |  | 17d | 2021-04-01 | 2021-04-22 |  | 0d |  |  | 208h | 12,896,000 |
| 14 | 2.2.1.1 | **Build Layout Mobile** |  | 12d | 2021-04-01 | 2021-04-15 |  | 0d |  |  | 192h | 11,904,000 |
| 15 | 2.2.1.1.1 | Home Interface |  | 2d | 2021-04-01 | 2021-04-02 | 11 | 0d | start no earlier than 2021-03-31 | FE Developer; Designer | 32h | 1,984,000 |
| 16 | 2.2.1.1.2 | Advertisement |  | 2d | 2021-04-03 | 2021-04-05 | 15 | 0d | start no earlier than 2021-04-03 | FE Developer; Designer | 32h | 1,984,000 |
| 17 | 2.2.1.1.3 | Menu toolbar |  | 2d | 2021-04-06 | 2021-04-07 | 16 | 0d |  | FE Developer; Designer | 32h | 1,984,000 |
| 18 | 2.2.1.1.4 | Products gallery |  | 2d | 2021-04-08 | 2021-04-09 | 17 | 0d |  | FE Developer; Designer | 32h | 1,984,000 |
| 19 | 2.2.1.1.5 | Product information |  | 3d | 2021-04-12 | 2021-04-14 | 18 | 0d |  | FE Developer; Designer | 48h | 2,976,000 |
| 20 | 2.2.1.1.6 | Admin interfacce |  | 1d | 2021-04-15 | 2021-04-15 | 19 | 0d |  | FE Developer; Designer | 16h | 992,000 |
| 21 | 2.2.1.2 | Feedback layout Mobile |  | 2d | 2021-04-16 | 2021-04-19 | 20 | 0d |  |  |  |  |
| 22 | 2.2.1.3 | Revise layout Mobile |  | 2d | 2021-04-20 | 2021-04-21 | 21 | 0d |  | Designer | 16h | 992,000 |
| 23 | 2.2.1.4 | Design Mobile sprint 1 approved |  | 1d | 2021-04-22 | 2021-04-22 | 22 | 0d |  |  |  |  |
| 24 | 2.2.2 | **Sprint 2** |  | 16d | 2021-04-23 | 2021-05-14 |  | 0d |  |  | 208h | 12,896,000 |
| 25 | 2.2.2.1 | **Build Layout Mobile** |  | 12d | 2021-04-23 | 2021-05-10 |  | 0d |  |  | 192h | 11,904,000 |
| 26 | 2.2.2.1.1 | Login interface |  | 2d | 2021-04-23 | 2021-04-26 | 23 | 0d |  | FE Developer; Designer | 32h | 1,984,000 |
| 27 | 2.2.2.1.2 | Register interface |  | 2d | 2021-04-27 | 2021-04-28 | 26 | 0d |  | FE Developer; Designer | 32h | 1,984,000 |
| 28 | 2.2.2.1.3 | User information interface |  | 2d | 2021-04-29 | 2021-04-30 | 27 | 0d |  | FE Developer; Designer | 32h | 1,984,000 |
| 29 | 2.2.2.1.4 | Cart interface |  | 2d | 2021-05-03 | 2021-05-04 | 28 | 0d |  | FE Developer; Designer | 32h | 1,984,000 |
| 30 | 2.2.2.1.5 | Payment |  | 2d | 2021-05-05 | 2021-05-06 | 29 | 0d |  | FE Developer; Designer | 32h | 1,984,000 |
| 31 | 2.2.2.1.6 | Shiping interface |  | 2d | 2021-05-07 | 2021-05-10 | 30 | 0d |  | FE Developer; Designer | 32h | 1,984,000 |
| 32 | 2.2.2.2 | Feedback layout Mobile |  | 1d | 2021-05-11 | 2021-05-11 | 31 | 0d |  |  |  |  |
| 33 | 2.2.2.3 | Revise layout Mobile |  | 2d | 2021-05-12 | 2021-05-13 | 32 | 0d |  | Designer | 16h | 992,000 |
| 34 | 2.2.2.4 | Design Mobile sprint 2 approved |  | 1d | 2021-05-14 | 2021-05-14 | 33 | 0d |  |  |  |  |

| ID | WBS | Task | Type | Duration | Start | Finish | Predecessors | Total slack | Free slack | Resources | Work | Cost |
| --- | --- | --- | --- | --- | --- | --- | --- | --- | --- | --- | --- | --- |
| 35 | 3 | **Front-end & Back-end Development** |  | 39d | 2021-04-23 | 2021-06-16 |  | 7d |  |  | 336h | 20,832,000 |
| 36 | 3.1 | **Sprint 1** |  | 39d | 2021-04-23 | 2021-06-16 |  | 7d |  |  | 136h | 8,432,000 |
| 37 | 3.1.1 | **Coding** |  | 35d | 2021-04-23 | 2021-06-10 | 23 | 7d | 0d |  | 120h | 7,440,000 |
| 38 | 3.1.1.1 | Develop constructor of database |  | 3d | 2021-04-23 | 2021-04-27 | 23 | 7d | 0d | BE Developer | 24h | 1,488,000 |
| 39 | 3.1.1.2 | Get connection to database |  | 3d | 2021-04-28 | 2021-04-30 | 38 | 7d | 0d | BE Developer | 24h | 1,488,000 |
| 40 | 3.1.1.3 | Dump data of product |  | 3d | 2021-05-03 | 2021-05-05 | 39 | 7d | 0d | BE Developer | 24h | 1,488,000 |
| 41 | 3.1.1.4 | Display home layout |  | 3d | 2021-05-11 | 2021-05-13 | 40 | 7d | 0d | FE Developer | 24h | 1,488,000 |
| 42 | 3.1.1.5 | Catch event button for home layout |  | 3d | 2021-05-14 | 2021-06-10 | 41 | 7d |  | FE Developer | 24h | 1,488,000 |
| 43 | 3.1.2 | Unit Testing |  | 2d | 2021-06-14 | 2021-06-16 | 37 | 9d |  | Tester | 16h | 992,000 |
| 44 | 3.2 | **Sprint 2** |  | 19d | 2021-05-17 | 2021-06-10 |  | 0d |  |  | 200h | 12,400,000 |
| 45 | 3.2.1 | **Coding & Unit Testing** |  | 17d | 2021-05-17 | 2021-06-08 | 34 | 0d |  |  | 184h | 11,408,000 |
| 46 | 3.2.1.1 | Catch event button shopping cart |  | 2d | 2021-05-17 | 2021-05-18 | 34 | 0d |  | FE Developer | 16h | 992,000 |
| 47 | 3.2.1.2 | Custom shopping cart |  | 4d | 2021-05-19 | 2021-05-24 | 46 | 0d |  | FE Developer | 32h | 1,984,000 |
| 48 | 3.2.1.3 | Dump data to cart layout |  | 3d | 2021-05-25 | 2021-05-27 | 47 | 0d |  | FE Developer | 24h | 1,488,000 |
| 49 | 3.2.1.4 | Catch interactive event with shopping cart |  | 2d | 2021-05-28 | 2021-05-31 | 48 | 0d |  | BE Developer; FE Developer | 32h | 1,984,000 |
| 50 | 3.2.1.5 | Create shopping cart table |  | 2d | 2021-06-01 | 2021-06-02 | 49 | 0d |  | FE Developer | 16h | 992,000 |
| 51 | 3.2.1.6 | Input information customer form |  | 2d | 2021-06-03 | 2021-06-04 | 50 | 0d |  | BE Developer; FE Developer | 32h | 1,984,000 |
| 52 | 3.2.1.7 | Save bill to database |  | 2d | 2021-06-07 | 2021-06-08 | 51 | 0d |  | BE Developer; FE Developer | 32h | 1,984,000 |
| 53 | 3.2.2 | Unit Testing |  | 2d | 2021-06-09 | 2021-06-10 | 52 | 0d |  | Tester | 16h | 992,000 |
| 54 | 4 | **Execute SIT** |  | 5d | 2021-06-11 | 2021-06-17 |  | 0d |  |  | 64h | 3,968,000 |
| 55 | 4.1 | Execute testing round 1 |  | 1d | 2021-06-11 | 2021-06-11 | 53 | 0d |  | Tester | 8h | 496,000 |
| 56 | 4.2 | SIT Bugs Fix round 1 |  | 1d | 2021-06-14 | 2021-06-14 | 55 | 0d |  | BE Developer; FE Developer | 16h | 992,000 |
| 57 | 4.3 | Execute testing round 2 |  | 1d | 2021-06-15 | 2021-06-15 | 56 | 0d |  | Tester | 8h | 496,000 |
| 58 | 4.4 | SIT Bugs Fix round 2 |  | 2d | 2021-06-16 | 2021-06-17 | 57 | 0d |  | BE Developer; FE Developer | 32h | 1,984,000 |
| 59 | 5 | Deliver to UAT | milestone | 0d | 2021-06-17 | 2021-06-17 | 58 | 0d |  |  |  |  |

| ID | WBS | Task | Duration | Start | Finish | Predecessors | Total slack | Resources | Work | Cost |
| --- | --- | --- | --- | --- | --- | --- | --- | --- | --- | --- |
| 60 | 6 | **UAT Execution** | 5d | 2021-06-18 | 2021-06-24 |  | 0d |  | 56h | 3,576,000 |
| 61 | 6.1 | Execute UAT round 1 | 1d | 2021-06-18 | 2021-06-18 | 59 | 0d | Tester | 8h | 496,000 |
| 62 | 6.2 | UAT Bugs Fix round 1 | 1d | 2021-06-21 | 2021-06-21 | 61 | 0d | BE Developer; FE Developer | 16h | 992,000 |
| 63 | 6.3 | Execute UAT round 2 | 1d | 2021-06-22 | 2021-06-22 | 62 | 0d | Tester | 8h | 496,000 |
| 64 | 6.4 | UAT Bugs Fix round 2 | 1d | 2021-06-23 | 2021-06-23 | 63 | 0d | BE Developer; FE Developer | 16h | 992,000 |
| 65 | 6.5 | UAT Sign-off | 1d | 2021-06-24 | 2021-06-24 | 64 | 0d | Project Manager | 8h | 600,000 |
| 66 | 7 | **Go-live** | 3d | 2021-06-25 | 2021-06-29 |  | 0d |  | 56h | 3,784,000 |
| 67 | 7.1 | Security Scan & Prepare Works for Go-live | 1d | 2021-06-25 | 2021-06-25 | 65 | 0d | Project Manager; BE Developer; FE Developer | 24h | 1,592,000 |
| 68 | 7.2 | Support Go-Live | 1d | 2021-06-28 | 2021-06-28 | 67 | 0d | Project Manager; BE Developer; FE Developer | 24h | 1,592,000 |
| 69 | 7.3 | Go-live Sign-off | 1d | 2021-06-29 | 2021-06-29 | 68 | 0d | Project Manager | 8h | 600,000 |
